# Ganglinien

Schedule from GanttProject, 2007-05-02 to 2007-05-14.
BitCtrl Systems GmbH

## Calendars

- Project calendar: Mon-Fri working; Sat-Sun off.

## Resources

| Resource |
| --- |
| Falko Schumann |

## Schedule

| ID | WBS | Task | Duration | Start | Finish | Predecessors | Complete | Resources |
| --- | --- | --- | --- | --- | --- | --- | --- | --- |
| 1 | 1 | **SWE 5.5 Funktionen Ganglinien** | 9d | 2007-05-02 | 2007-05-14 |  | 64% |  |
| 2 | 1.1 | **Ganglinie** | 6d | 2007-05-02 | 2007-05-09 |  | 100% |  |
| 3 | 1.1.1 | Definition | 1d | 2007-05-02 | 2007-05-02 |  | 100% | Falko Schumann |
| 4 | 1.1.2 | Approximation | 2d | 2007-05-03 | 2007-05-04 | 3 | 100% | Falko Schumann |
| 5 | 1.1.3 | Math. Operationen | 1d | 2007-05-07 | 2007-05-07 | 3, 4 | 100% | Falko Schumann |
| 6 | 1.1.4 | Pattern Matching | 2d | 2007-05-08 | 2007-05-09 | 5 | 100% | Falko Schumann |
| 7 | 1.2 | **Verwaltung** | 3d | 2007-05-10 | 2007-05-14 |  | 12% |  |
| 8 | 1.2.1 | Erweiterung MQ | 1d | 2007-05-10 | 2007-05-10 |  | 50% | Falko Schumann |
| 9 | 1.2.2 | Kommunikation mit DaV | 2d | 2007-05-11 | 2007-05-14 | 8 |  | Falko Schumann |

Notes:
- 9: 1) Speicherattributgruppe am MQ fehlt im DaK / 2) Wertebereich und Werttyp der Stützstellen muss im DaK angepasst werden von Ganzzahl > 0 auf positive und negative Gleitkommazahlen
